# GreenLeaf Schedule

Schedule from MS Project, 2022-10-31 to 2023-02-13, A marks actual dates.

## Calendars

- Standard: Mon-Fri 09:00-13:00, 14:00-18:00; Sat-Sun off. Exceptions (off unless hours are given): 2022-11-06 09:00-13:00, 14:00-18:00, 2022-11-13 09:00-13:00, 14:00-18:00, 2022-12-24 09:00-13:00, 14:00-18:00, 2023-01-15 09:00-13:00, 14:00-18:00, 2023-01-21 09:00-13:00, 14:00-18:00.

## Resources

| Resource |
| --- |
| Alessandro Borrelli |
| Michela Faella |
| Vincenzo Cercella |
| Mirko Vitale |
| Team Member |
| Gerardo Napolitano |

## Schedule

| ID | WBS | Task | Type | Duration | Start | Finish | Predecessors | Complete | Constraint | Work | Actual work | Baseline cost |
| --- | --- | --- | --- | --- | --- | --- | --- | --- | --- | --- | --- | --- |
| 1 | 1 | **Green Leaf** |  | 81d | 2022-10-31 A | 2023-02-13 A |  | 100% |  | 250h | 250h | 3,750 |
| 2 | 1.1 | **Requirement Eicitation and Analysis** |  | 22d | 2022-10-31 A | 2022-11-25 A |  | 100% |  | 60h | 60h | 900 |
| 3 | 1.1.1 | **Requirement Elicitation** |  | 12d | 2022-10-31 A | 2022-11-13 A |  | 100% |  | 35h | 35h | 525 |
| 4 | 1.1.1.1 | Requisiti Funzionali | manual | 5d | 2022-10-31 A | 2022-11-04 A |  | 100% | finish no earlier than 2022-11-04 | 15h | 15h | 225 |
| 5 | 1.1.1.2 | Requisiti Non Funzionali | manual | 4d | 2022-11-09 A | 2022-11-13 A |  | 100% | finish no earlier than 2022-11-13 | 4h | 4h | 60 |
| 6 | 1.1.1.3 | Scenari | manual | 8d | 2022-10-31 A | 2022-11-08 A |  | 100% | finish no earlier than 2022-11-08 | 8h | 8h | 120 |
| 7 | 1.1.1.4 | Casi D'Uso | manual | 8d | 2022-10-31 A | 2022-11-08 A |  | 100% |  | 8h | 8h | 120 |
| 8 | 1.1.2 | **Requirement Analysis** |  | 8d | 2022-11-16 A | 2022-11-25 A | 3 | 100% |  | 25h | 25h | 375 |
| 9 | 1.1.2.1 | Class Diagram | manual | 8d | 2022-11-16 A | 2022-11-25 A |  | 100% | start no earlier than 2022-11-16 | 10h | 10h | 150 |
| 10 | 1.1.2.2 | Sequence Diagram | manual | 8d | 2022-11-16 A | 2022-11-25 A |  | 100% | start no earlier than 2022-11-16 | 6h | 6h | 90 |
| 11 | 1.1.2.3 | Activity Diagram | manual | 8d | 2022-11-16 A | 2022-11-25 A |  | 100% | start no earlier than 2022-11-16 | 2h | 2h | 30 |
| 12 | 1.1.2.4 | State Chart Diagram | manual | 8d | 2022-11-16 A | 2022-11-25 A |  | 100% | start no earlier than 2022-11-16 | 2h | 2h | 30 |
| 13 | 1.1.2.5 | Mockup e Navigational Path | manual | 8d | 2022-11-16 A | 2022-11-25 A |  | 100% | finish no earlier than 2022-11-25 | 5h | 5h | 75 |
| 14 | 1.2 | **System Design** |  | 7d | 2022-11-26 A | 2022-12-05 A | 2 | 100% |  | 25h | 25h | 375 |
| 15 | 1.2.1 | Identificazione Design Goal | manual | 3d | 2022-11-26 A | 2022-11-29 A |  | 100% | start no earlier than 2022-11-26 | 4h | 4h | 60 |
| 16 | 1.2.2 | Definizione dell'architettura del sistema | manual | 3d | 2022-11-26 A | 2022-11-29 A |  | 100% | start no earlier than 2022-11-26 | 6h | 6h | 90 |
| 17 | 1.2.3 | Decomposizione del sistema | manual | 3d | 2022-11-26 A | 2022-11-29 A |  | 100% | start no earlier than 2022-11-26 | 6h | 6h | 90 |
| 18 | 1.2.4 | Identificazione dati persistenti | manual | 3d | 2022-11-30 A | 2022-12-02 A |  | 100% | start no earlier than 2022-11-30 | 3h | 3h | 45 |
| 19 | 1.2.5 | Identificazione dei vincoli di sicurezza | manual | 2d | 2022-12-03 A | 2022-12-05 A |  | 100% | start no earlier than 2022-12-03 | 3h | 3h | 45 |
| 20 | 1.2.6 | Identificazione servizi dei sottosistemi | manual | 2d | 2022-12-03 A | 2022-12-05 A |  | 100% | start no earlier than 2022-12-03 | 3h | 3h | 45 |
| 21 | 1.3 | **System Testing Design** |  | 4d | 2022-12-06 A | 2022-12-09 A | 14 | 100% |  | 15h | 15h | 225 |
| 22 | 1.3.1 | Identificazione Test Funzionali | manual | 4d | 2022-12-06 A | 2022-12-09 A |  | 100% |  | 8h | 8h | 120 |
| 23 | 1.3.2 | Test Case Specification | manual | 4d | 2022-12-06 A | 2022-12-09 A |  | 100% |  | 7h | 7h | 105 |
| 24 | 1.4 | Consegna Intermedia | milestone, manual | 0d | 2022-12-12 A | 2022-12-12 A | 21 | 100% | start no earlier than 2022-12-12 |  |  |  |

| ID | WBS | Task | Type | Duration | Start | Finish | Predecessors | Complete | Constraint | Work | Actual work | Baseline cost |
| --- | --- | --- | --- | --- | --- | --- | --- | --- | --- | --- | --- | --- |
| 25 | 1.5 | **Object Design** |  | 9d | 2022-12-21 A | 2022-12-30 A | 14 | 100% |  | 30h | 30h | 450 |
| 26 | 1.5.1 | Identificazione Trade Off | manual | 1d | 2022-12-21 A | 2022-12-21 A |  | 100% | start no earlier than 2022-12-21 | 3h | 3h | 45 |
| 27 | 1.5.2 | Suddivisione in package | manual | 5d | 2022-12-22 A | 2022-12-27 A |  | 100% |  | 7h | 7h | 105 |
| 28 | 1.5.3 | Identificazine Intefacce | manual | 3d | 2022-12-28 A | 2022-12-30 A |  | 100% | start no earlier than 2022-12-28 | 8h | 8h | 120 |
| 29 | 1.5.4 | **Identificazione tecniche di riutilizzo** |  | 3d | 2022-12-28 A | 2022-12-30 A |  | 100% |  | 12h | 12h | 180 |
| 30 | 1.5.4.1 | Descrizione componenti off-the-shelf | manual | 3d | 2022-12-28 A | 2022-12-30 A |  | 100% |  | 3h | 3h | 45 |
| 31 | 1.5.4.2 | Individuazione Design Pattern | manual | 3d | 2022-12-28 A | 2022-12-30 A |  | 100% |  | 9h | 9h | 135 |
| 32 | 1.6 | **Implementazione** |  | 24d | 2023-01-02 A | 2023-01-31 A | 25 | 100% |  | 100h | 100h | 1,500 |
| 33 | 1.6.1 | GUI | manual | 24d | 2023-01-02 A | 2023-01-31 A |  | 100% |  | 40h | 40h | 600 |
| 34 | 1.6.2 | Business | manual | 24d | 2023-01-02 A | 2023-01-31 A |  | 100% |  | 40h | 40h | 600 |
| 35 | 1.6.3 | Storage | manual | 24d | 2023-01-02 A | 2023-01-31 A |  | 100% |  | 20h | 20h | 300 |
| 36 | 1.7 | **Testing** |  | 4d | 2023-02-01 A | 2023-02-05 A | 21, 32 | 100% |  | 15h | 15h | 225 |
| 37 | 1.7.1 | Test Case Execution | manual | 4d | 2023-02-01 A | 2023-02-05 A |  | 100% |  | 6h | 6h | 90 |
| 38 | 1.7.2 | Test Incident Report | manual | 4d | 2023-02-01 A | 2023-02-05 A |  | 100% |  | 6h | 6h | 90 |
| 39 | 1.7.3 | Test Summary Report | manual | 4d | 2023-02-01 A | 2023-02-05 A |  | 100% |  | 3h | 3h | 45 |
| 40 | 1.8 | **Release** |  | 4d | 2023-02-06 A | 2023-02-09 A | 32 | 100% |  | 5h | 5h | 75 |
| 41 | 1.8.1 | Manuale Installazione | manual | 4d | 2023-02-06 A | 2023-02-09 A |  | 100% | start no earlier than 2023-02-06 | 2.5h | 2.5h | 37.5 |
| 42 | 1.8.2 | Manuale Utente | manual | 4d | 2023-02-06 A | 2023-02-09 A |  | 100% |  | 2.5h | 2.5h | 37.5 |
| 43 | 1.9 | Consegna Finale | manual | 1d | 2023-02-13 A | 2023-02-13 A | 2, 14, 21, 25, 32, 36, 40 | 100% |  |  |  |  |
